# Cro_Pais2

How a schedule from MS Project changed from version to version. A marks actual dates.

## Version 1 (saved 2010-04-16)

| ID | WBS | Task | Duration | Start | Finish | Predecessors | Complete | Total float | Constraint |
| --- | --- | --- | --- | --- | --- | --- | --- | --- | --- |
| 1 | 1 | **PAIS** | 85d | 2010-04-12 A | 2010-08-06 |  | 12% | 0d |  |
| 2 | 1.1 | **Início** | 85d | 2010-04-12 A | 2010-08-06 |  | 12% | 0d |  |
| 3 | 1.1.1 | **Modulo Árvore Genealógica** | 53d | 2010-04-12 A | 2010-06-23 |  | 18% | 32d |  |
| 4 | 1.1.1.1 | **Análise** | 8d | 2010-04-12 A | 2010-04-21 |  | 59% | 77d |  |
| 5 |  | Descrição do Sistema | 3d | 2010-04-12 A | 2010-04-14 A |  | 100% |  | finish no earlier than 2010-04-14 |
| 6 |  | Definição de Nomeclaturas | 2d | 2010-04-15 A | 2010-04-16 A | 5 | 100% |  |  |
| 7 |  | Modelagem do Banco (Analise) | 3d | 2010-04-13 A | 2010-04-15 A | 6 | 100% |  | start no earlier than 2010-04-13 |
| 8 | 1.1.1.1.4 | **Caso de Uso** | 5d | 2010-04-15 A | 2010-04-21 |  | 46% | 77d |  |
| 9 |  | Modelagem | 2d | 2010-04-15 A | 2010-04-16 A | 5 | 100% |  | finish no earlier than 2010-04-13 |
| 10 |  | descrição | 3d | 2010-04-19 A | 2010-04-21 | 9 | 10% | 77d |  |
| 11 |  | Diagrama de Atividades | 2d | 2010-04-15 | 2010-04-16 | 5 |  | 80d | finish no earlier than 2010-04-16 |
| 12 |  | Diagrama de Estatus | 2d | 2010-04-15 | 2010-04-16 | 5 |  | 79.5d | finish no earlier than 2010-04-16 |
| 13 |  | Validação | 4h | 2010-04-19 | 2010-04-19 | 12 |  | 79.5d | finish no earlier than 2010-04-16 |
| 14 | 1.1.1.2 | **Projeto** | 53d | 2010-04-12 A | 2010-06-23 |  | 9% | 32d |  |
| 15 |  | Definição da Arquitetura do Sistema | 1h | 2010-04-12 A | 2010-04-12 A |  | 100% |  | start no earlier than 2010-04-12 |
| 16 |  | Definição da Linguagem | 1h | 2010-04-16 A | 2010-04-16 A |  | 100% |  | finish no earlier than 2010-04-16 |
| 17 |  | Definição do banco | 1h | 2010-04-16 A | 2010-04-16 A |  | 100% |  | finish no earlier than 2010-04-16 |
| 18 | 1.1.1.2.4 | **Projeto de Banco** | 10d | 2010-04-12 A | 2010-04-23 |  | 50% | 75d |  |
| 19 |  | Dicionário de Dados | 5d | 2010-04-19 | 2010-04-23 |  |  | 75d | finish no earlier than 2010-04-23 |
| 20 |  | Modelagem de Projeto (WorkBanq) | 5d | 2010-04-12 A | 2010-04-16 A |  | 100% |  |  |
| 21 |  | Layout | 5d | 2010-05-03 | 2010-05-07 |  |  | 65d | start no earlier than 2010-05-03 |
| 22 |  | Montar a Arquitetura do Sistema | 4d | 2010-04-19 | 2010-04-22 |  |  | 76d | start no earlier than 2010-04-19 |
| 23 | 1.1.1.2.7 | **Implementação** | 25d | 2010-04-26 | 2010-05-28 |  |  | 50d |  |
| 24 |  | Casos de Uso (Add todas as funcionalidades) | 25d | 2010-04-26 | 2010-05-28 |  |  | 50d | finish no earlier than 2010-05-28 |
| 25 |  | Casos de Testes | 4d | 2010-05-12 | 2010-05-17 |  |  | 59d | start no earlier than 2010-05-12 |
| 26 |  | Implantação | 3d | 2010-06-21 | 2010-06-23 |  |  | 32d | finish no earlier than 2010-06-23 |
| 27 |  | Documentação do Sistema | 28d | 2010-05-07 A | 2010-06-15 |  | 5% | 38d | start no earlier than 2010-05-07 |
| 28 | 1.1.2 | **Modulo Mover Urbano** | 23.5d | 2010-07-01 A | 2010-08-03 |  | 1% | 3.5d |  |
| 29 | 1.1.2.1 | **Análise** | 6.7d | 2010-07-01 A | 2010-07-09 |  | 2% | 20.3d |  |
| 30 |  | Descrição do Sistema | 2d | 2010-07-01 | 2010-07-02 |  |  | 3.5d | start no earlier than 2010-07-01 |
| 31 |  | Definição de Nomeclaturas | 1d | 2010-07-05 | 2010-07-05 | 30 |  | 22d |  |
| 32 |  | Modelagem do Banco (Analise) | 2d | 2010-07-06 | 2010-07-07 | 31 |  | 22d | start no earlier than 2010-04-13 |
| 33 | 1.1.2.1.4 | **Caso de Uso** | 6.7d | 2010-07-01 A | 2010-07-09 |  | 6% | 20.3d |  |
| 34 |  | Modelagem | 2d | 2010-07-05 | 2010-07-06 | 30 |  | 20.3d | finish no earlier than 2010-04-13 |
| 35 |  | descrição | 3d | 2010-07-01 A | 2010-07-09 | 34 | 10% | 20.3d |  |
| 36 |  | Diagrama de Atividades | 1d | 2010-07-05 | 2010-07-05 | 30 |  | 24d | finish no earlier than 2010-04-16 |
| 37 |  | Diagrama de Estatus | 1d | 2010-07-05 | 2010-07-05 | 30 |  | 3.5d | finish no earlier than 2010-04-16 |
| 38 |  | Validação | 4h | 2010-07-06 | 2010-07-06 | 37 |  | 3.5d | finish no earlier than 2010-04-16 |
| 39 | 1.1.2.2 | **Projeto** | 20d | 2010-07-06 | 2010-08-03 |  |  | 3.5d |  |
| 40 | 1.1.2.2.1 | **Projeto de Banco** | 2d | 2010-07-06 | 2010-07-08 |  |  | 21.5d |  |
| 41 |  | Dicionário de Dados | 2d | 2010-07-06 | 2010-07-08 | 38 |  | 21.5d | finish no earlier than 2010-04-23 |
| 42 |  | Modelagem de Projeto (WorkBanq) | 2d | 2010-07-06 | 2010-07-08 | 38 |  | 21.5d |  |
| 43 |  | Layout | 5d | 2010-07-06 | 2010-07-13 | 38 |  | 18.5d | start no earlier than 2010-05-03 |
| 44 | 1.1.2.2.3 | **Implementação** | 15d | 2010-07-06 | 2010-07-27 |  |  | 3.5d |  |
| 45 |  | Casos de Uso (Add todas as funcionalidades) | 15d | 2010-07-06 | 2010-07-27 | 38 |  | 3.5d | finish no earlier than 2010-05-28 |
| 46 |  | Casos de Testes | 2d | 2010-07-27 | 2010-07-29 | 45 |  | 5.5d | start no earlier than 2010-05-12 |
| 47 |  | Implantação | 1d | 2010-07-29 | 2010-07-30 | 46 |  | 5.5d | finish no earlier than 2010-06-23 |
| 48 |  | Documentação do Sistema | 5d | 2010-07-27 | 2010-08-03 | 45 |  | 3.5d | start no earlier than 2010-05-07 |
| 50 |  | fim | 0d | 2010-08-06 | 2010-08-06 |  |  | 0d | finish no earlier than 2010-08-06 |

## Version 2 (saved 2010-04-27)

Note of the change: add descricao UC

Last finish stays 2010-08-06. Complete tasks 8 → 10.

Changed:

| ID | Task | Start | Finish | Complete | Total float | Other |
| --- | --- | --- | --- | --- | --- | --- |
| 1 | **PAIS** |  |  | 12% → 19% |  |  |
| 2 | **Início** |  |  | 12% → 19% |  |  |
| 3 | **Modulo Árvore Genealógica** |  |  | 18% → 28% |  |  |
| 4 | **Análise** |  |  | 59% → 90% |  |  |
| 8 | **Caso de Uso** |  |  | 46% → 76% |  |  |
| 10 | descrição |  |  | 10% → 60% |  |  |
| 11 | Diagrama de Atividades | 2010-04-15 A | 2010-04-16 A | 0% → 100% | 80d → none |  |
| 12 | Diagrama de Estados | 2010-04-15 A | 2010-04-16 A | 0% → 100% | 79.5d → none | was named Diagrama de Estatus |
| 14 | **Projeto** |  |  | 9% → 14% |  |  |
| 18 | **Projeto de Banco** |  |  | 50% → 75% |  |  |
| 19 | Dicionário de Dados | 2010-04-19 A |  | 0% → 50% |  |  |
| 21 | Layout | 2010-05-03 A |  | 0% → 5% |  |  |
| 22 | Montar a Arquitetura do Sistema | 2010-04-19 A |  | 0% → 40% |  |  |
| 43 | Layout |  |  |  |  | resources Laerto → Laerton |

## Version 3 (saved 2010-05-04)

Last finish stays 2010-08-06. Complete tasks 10 → 13.

Added:

| ID | Task | Duration | Start | Finish | Constraint | Resources |
| --- | --- | --- | --- | --- | --- | --- |
| 11 | Manter discipulo | 12h | 2010-04-23 A | 2010-04-26 A | start no earlier than 2010-04-23 | Manfrine |
| 12 | Manter Celula | 12h | 2010-04-22 A | 2010-04-23 A | start no earlier than 2010-04-22 | Manfrine |
| 23 | Banco de dados gerado | 5d | 2010-04-28 | 2010-05-04 | finish no earlier than 2010-05-04 | Manfrine |

Changed:

| ID | Task | Finish | Duration | Complete | Total float | Other |
| --- | --- | --- | --- | --- | --- | --- |
| 1 | **PAIS** |  |  | 19% → 26% |  |  |
| 2 | **Início** |  |  | 19% → 26% |  |  |
| 3 | **Modulo Árvore Genealógica** |  |  | 28% → 36% |  |  |
| 4 | **Análise** | 2010-04-21 → 2010-04-26 (+5d) | 8d → 10.5d | 90% → 98% | 77d → 74.5d |  |
| 8 | **Caso de Uso** | 2010-04-21 → 2010-04-26 A (+5d) | 5d → 7.5d | 76% → 100% | 77d → none |  |
| 10 | descrição | 2010-04-21 A |  | 60% → 100% | 77d → none |  |
| 16 | **Projeto** |  |  | 14% → 21% |  |  |
| 20 | **Projeto de Banco** | 2010-04-23 → 2010-05-04 (+11d) | 10d → 17d | 75% → 50% | 75d → 68d |  |
| 25 | Montar a Arquitetura do Sistema | 2010-04-22 → 2010-04-23 (+1d) | 4d → 5d | 40% → 32% | 76d → 75d | constraint start no earlier than 2010-04-19 → finish no earlier than 2010-04-23 |
| 30 | Documentação do Sistema |  |  | 5% → 30% |  |  |
